Schedule from MS Project, 2023-11-09 to 2024-01-12, costs in €.

## Calendars

- Calendario UHU ETSI: Mon-Fri 09:00-13:00, 15:00-19:00; Sat-Sun off. Exceptions (off unless hours are given): 2023-12-06 to 2023-12-08 (Puente), 2023-12-25 to 2024-01-05 (Navidad).

## Resources

| Resource | Rate |
| --- | --- |
| JefeA | 42.3 |
| AnalistaW | 32.81 |
| AnalistaD | 29.82 |
| AnalistaP | 26.84 |
| Administrativo | 19.21 |
| ProgramadorJ | 16.35 |

## Schedule

| ID | WBS | Task | Duration | Start | Finish | Predecessors | Total slack | Free slack | Resources | Work | Cost |
| --- | --- | --- | --- | --- | --- | --- | --- | --- | --- | --- | --- |
| 1 | 1 | **Proyecto** | 34d | 2023-11-09 | 2024-01-12 |  | -1d | 0d |  | 1112h | 32,092.84 |
| 2 | 1.1 | **Requirimientos de los ususarios** | 4d | 2023-11-09 | 2023-11-14 |  | -1d | 0d |  | 48h | 1,483.6 |
| 3 | 1.1.1 | Toma de Requisitos | 2.67d | 2023-11-09 | 2023-11-13 |  | -1d | 0d | AnalistaW; AnalistaP; AnalistaD | 40h | 1,145.2 |
| 4 | 1.1.2 | Validación de los requisitos de usuario | 1d | 2023-11-14 | 2023-11-14 | 3 | -1d | 0d | JefeA | 8h | 338.4 |
| 5 | 1.2 | **Análisis de requisitos del software** | 6d | 2023-11-09 | 2023-11-16 |  | 0d |  |  | 144h | 4,418.16 |
| 6 | 1.2.1 | Estudio de los requisitos Software | 2d | 2023-11-09 | 2023-11-10 |  | 0d |  | AnalistaD; AnalistaW; JefeA | 48h | 1,678.88 |
| 7 | 1.2.2 | Validación de los requisito Software | 1d | 2023-11-13 | 2023-11-13 | 6 | 0d |  | JefeA | 8h | 338.4 |
| 8 | 1.2.3 | Instalación del Software necesario en los PCs | 1d | 2023-11-14 | 2023-11-14 | 7 | 0d |  | AnalistaD; AnalistaP; AnalistaW; ProgramadorJ | 32h | 846.56 |
| 9 | 1.2.4 | Preparación de los puestos de trabajo | 1d | 2023-11-15 | 2023-11-16 | 8 | 0d |  | AnalistaD; ProgramadorJ | 16h | 369.36 |
| 10 | 1.2.5 | Preparación del servidor de desarrollo | 1d | 2023-11-13 | 2023-11-15 | 6 | 1d |  | AnalistaD; AnalistaP; AnalistaW; ProgramadorJ | 32h | 846.56 |
| 11 | 1.2.6 | Preparación del sercidor de preexplotación | 1d | 2023-11-13 | 2023-11-15 | 6 | 1d |  | JefeA | 8h | 338.4 |
| 12 | 1.3 | **Analisi de requisitos del sistema** | 3d | 2023-11-15 | 2023-11-17 |  | -1d | 0d |  | 48h | 1,399.68 |
| 13 | 1.3.1 | Estimación de hardware necesario. | 1d | 2023-11-15 | 2023-11-16 | 4 | -1d | 0d | AnalistaP; AnalistaW; JefeA | 24h | 815.6 |
| 14 | 1.3.2 | Validación de hardware necesario. | 1d | 2023-11-17 | 2023-11-17 | 13 | -1d | 0d | ProgramadorJ; AnalistaP; AnalistaD | 24h | 584.08 |
| 15 | 1.4 | **Diseño Preliminar** | 7d | 2023-11-20 | 2023-11-28 |  | -1d | 0d |  | 112h | 4,038.72 |
| 16 | 1.4.1 | Diseño de los datos y procesos. | 6d | 2023-11-20 | 2023-11-27 | 2, 5, 12 | -1d | 0d | JefeA; AnalistaD | 96h | 3,461.76 |
| 17 | 1.4.2 | Diseño del plan de pruebas. | 1d | 2023-11-28 | 2023-11-28 | 16 | 20d |  | AnalistaD; JefeA | 16h | 576.96 |
| 18 | 1.5 | **. Diseño Detallado** | 11d | 2023-11-28 | 2023-12-15 |  | 10d |  |  | 136h | 4,088.64 |
| 19 | 1.5.1 | Diseño gráfico de la aplicación | 2.5d | 2023-11-28 | 2023-11-30 | 16 | 18.5d |  | AnalistaW; JefeA | 40h | 1,464.24 |
| 20 | 1.5.2 | **Diseño Técnico de componentes** | 11d | 2023-11-28 | 2023-12-15 |  | 10d |  |  | 96h | 2,624.4 |
| 21 | 1.5.2.1 | Presentación | 1d | 2023-11-28 | 2023-12-01 | 16 | 17d |  | AnalistaW | 8h | 262.48 |
| 22 | 1.5.2.2 | Mantenimiento de Explotación Ganadera | 2d | 2023-11-28 | 2023-11-29 | 16 | 19d |  | AnalistaP | 16h | 429.44 |
| 23 | 1.5.2.3 | Mantenimiento de Historial; Reservas,Tarifas y Eventos. | 4d | 2023-11-28 | 2023-12-05 | 16 | 15d |  | AnalistaP | 32h | 858.88 |
| 24 | 1.5.2.4 | Localización | 5d | 2023-11-28 | 2023-12-15 | 16 | 10d |  | AnalistaP | 40h | 1,073.6 |

| ID | WBS | Task | Type | Duration | Start | Finish | Predecessors | Total slack | Free slack | Constraint | Resources | Work | Cost |
| --- | --- | --- | --- | --- | --- | --- | --- | --- | --- | --- | --- | --- | --- |
| 25 | 1.6 | **Diseño de la Base de Datos** |  | 5d | 2023-11-28 | 2023-12-04 |  | -1d | 0d |  |  | 48h | 1,631.04 |
| 26 | 1.6.1 | Diseño de Tablas y Relaciones |  | 2.5d | 2023-11-28 | 2023-12-01 | 16 | -1d | 0d |  | AnalistaD; JefeA | 24h | 765.6 |
| 27 | 1.6.2 | Validación del diseño de la BD |  | 2d | 2023-12-01 | 2023-12-04 | 26 | -1d | 0d | start no later than 2023-12-01 | JefeA; AnalistaD | 24h | 865.44 |
| 28 | 1.6.3 | Entrega del diseño de la aplicación | milestone | 0d | 2023-12-04 | 2023-12-04 | 27 | 16d |  |  |  |  |  |
| 29 | 1.7 | **Construcción** |  | 14d | 2023-11-24 | 2023-12-18 |  | 0d |  |  |  | 312h | 8,661.68 |
| 30 | 1.7.1 | Construcción del Prototipo |  | 1d | 2023-12-05 | 2023-12-05 | 16FS+5d | 15d |  |  | AnalistaD; AnalistaW; JefeA | 24h | 839.44 |
| 31 | 1.7.2 | Construcción de la BD |  | 2d | 2023-12-05 | 2023-12-12 | 27 | 13d |  |  | AnalistaW; AnalistaD; JefeA | 40h | 1,340.48 |
| 32 | 1.7.3 | Codificación |  | 14d | 2023-11-24 | 2023-12-18 | 16FS-2d | 0d |  |  | ProgramadorJ; AnalistaW; AnalistaD; AnalistaP; JefeA | 248h | 6,481.76 |
| 33 | 1.8 | **Pruebas** |  | 2.4d | 2023-12-19 | 2023-12-21 |  | 0d |  |  |  | 96h | 2,666.44 |
| 34 | 1.8.1 | Pruebas Unitarias |  | 0.6d | 2023-12-19 | 2023-12-19 | 32 | 0d |  |  | AnalistaD; AnalistaP; AnalistaW; JefeA; ProgramadorJ | 24h | 710.98 |
| 35 | 1.8.2 | Pruebas de Integración |  | 0.4d | 2023-12-19 | 2023-12-19 | 34 | 0d |  |  | AnalistaD; AnalistaP; AnalistaW; JefeA; ProgramadorJ | 16h | 473.98 |
| 36 | 1.8.3 | Pruebas de Sistema |  | 1.4d | 2023-12-20 | 2023-12-21 | 35 | 4d | 0d |  | AnalistaD; AnalistaP; AnalistaW; JefeA; ProgramadorJ | 56h | 1,481.48 |
| 37 | 1.9 | **Demostración a los usuarios** |  | 2.6d | 2023-12-21 | 2024-01-08 |  | 4d |  |  |  | 48h | 1,399.68 |
| 38 | 1.9.1 | Entrenamiento de usuarios |  | 0.4d | 2023-12-21 | 2023-12-22 | 36 | 4d | 0d |  | AnalistaD; AnalistaP; AnalistaW; JefeA; ProgramadorJ | 32h | 846.56 |
| 39 | 1.9.2 | Validación del producto por los usuarios |  | 1d | 2023-12-22 | 2024-01-08 | 38 | 4d | 0d |  | JefeA; AnalistaP | 16h | 553.12 |
| 40 | 1.9.3 | Aceptación del producto | milestone | 0d | 2024-01-08 | 2024-01-08 | 39 | 4d |  |  |  |  |  |
| 41 | 1.10 | **Documentación** |  | 19d | 2023-11-30 | 2024-01-12 |  | 0d |  |  |  | 120h | 2,305.2 |
| 42 | 1.10.1 | Documentación técnica de proyecto |  | 10d | 2023-11-30 | 2023-12-18 | 32FF | 9d |  |  | Administrativo | 80h | 1,536.8 |
| 43 | 1.10.2 | Documentación de usuarios |  | 5d | 2024-01-08 | 2024-01-12 | 35FS+3d | 0d |  |  | Administrativo | 40h | 768.4 |
