Schedule from MS Project, 2023-11-09 to 2024-01-24, costs in €, A marks actual dates.

## Calendars

- Calendario UHU ETSI: Mon-Fri 09:00-13:00, 15:00-19:00; Sat-Sun off. Exceptions (off unless hours are given): 2023-12-06 to 2023-12-08 (Puente), 2023-12-25 to 2024-01-05 (Navidad).

## Resources

| Resource | Rate |
| --- | --- |
| JefeA | 42.3 |
| AnalistaW | 32.81 |
| AnalistaD | 29.82 |
| AnalistaP | 26.84 |
| Administrativo | 19.21 |
| ProgramadorJ | 16.35 |

## Schedule

| ID | WBS | Task | Duration | Start | Finish | Predecessors | Complete | Remaining | Baseline start | Baseline finish | Baseline duration | Total slack | Free slack | Resources | Work | Actual work | Cost | Baseline cost | Actual cost |
| --- | --- | --- | --- | --- | --- | --- | --- | --- | --- | --- | --- | --- | --- | --- | --- | --- | --- | --- | --- |
| 1 | 1 | **Proyecto** | 42d | 2023-11-09 A | 2024-01-24 |  | 23% | 32.22d | 2023-11-09 | 2024-01-12 | 34d | 0d |  |  | 1432h | 480h | 36,242.84 | 32,092.84 | 10,165.77 |
| 2 | 1.1 | **Requirimientos de los ususarios** | 4d | 2023-11-09 A | 2023-11-14 A |  | 100% |  | 2023-11-09 | 2023-11-14 | 4d |  |  |  | 48h | 48h | 1,483.6 | 1,483.6 | 1,483.6 |
| 3 | 1.1.1 | Toma de Requisitos | 2.67d | 2023-11-09 A | 2023-11-13 A |  | 100% |  | 2023-11-09 | 2023-11-13 | 2.67d |  |  | AnalistaW; AnalistaP; AnalistaD | 40h | 40h | 1,145.2 | 1,145.2 | 1,145.2 |
| 4 | 1.1.2 | Validación de los requisitos de usuario | 1d | 2023-11-14 A | 2023-11-14 A | 3 | 100% |  | 2023-11-14 | 2023-11-14 | 1d |  |  | JefeA | 8h | 8h | 338.4 | 338.4 | 338.4 |
| 5 | 1.2 | **Análisis de requisitos del software** | 15d | 2023-11-09 A | 2023-11-29 |  | 82% | 2.65d | 2023-11-09 | 2023-11-16 | 6d | -1d | 0d |  | 464h | 384h | 8,568.16 | 4,418.16 | 7,282.49 |
| 6 | 1.2.1 | Estudio de los requisitos Software | 2d | 2023-11-09 A | 2023-11-10 A |  | 100% |  | 2023-11-09 | 2023-11-10 | 2d |  |  | AnalistaD; AnalistaW; JefeA | 48h | 48h | 1,678.88 | 1,678.88 | 1,678.88 |
| 7 | 1.2.2 | Validación de los requisito Software | 1d | 2023-11-13 A | 2023-11-13 A | 6 | 100% |  | 2023-11-13 | 2023-11-13 | 1d |  |  | JefeA | 8h | 8h | 338.4 | 338.4 | 338.4 |
| 8 | 1.2.3 | Instalación del Software necesario en los PCs | 11d | 2023-11-14 A | 2023-11-28 | 7 | 82% | 2d | 2023-11-14 | 2023-11-14 | 1d | -2d | 0d | AnalistaD; AnalistaP; AnalistaW; ProgramadorJ | 352h | 288h | 4,996.56 | 846.56 | 4,080.25 |
| 9 | 1.2.4 | Preparación de los puestos de trabajo | 1d | 2023-11-29 | 2023-11-29 | 8 |  |  | 2023-11-15 | 2023-11-16 | 1d | -2d | 0d | AnalistaD; ProgramadorJ | 16h |  | 369.36 | 369.36 |  |
| 10 | 1.2.5 | Preparación del servidor de desarrollo | 1d | 2023-11-13 A | 2023-11-15 A | 6 | 100% |  | 2023-11-13 | 2023-11-15 | 1d |  |  | AnalistaD; AnalistaP; AnalistaW; ProgramadorJ | 32h | 32h | 846.56 | 846.56 | 846.56 |
| 11 | 1.2.6 | Preparación del sercidor de preexplotación | 1d | 2023-11-13 A | 2023-11-15 A | 6 | 100% |  | 2023-11-13 | 2023-11-15 | 1d |  |  | JefeA | 8h | 8h | 338.4 | 338.4 | 338.4 |
| 12 | 1.3 | **Analisi de requisitos del sistema** | 3d | 2023-11-15 A | 2023-11-17 A |  | 100% |  | 2023-11-15 | 2023-11-17 | 3d |  |  |  | 48h | 48h | 1,399.68 | 1,399.68 | 1,399.68 |
| 13 | 1.3.1 | Estimación de hardware necesario. | 1d | 2023-11-15 A | 2023-11-16 A | 4 | 100% |  | 2023-11-15 | 2023-11-16 | 1d |  |  | AnalistaP; AnalistaW; JefeA | 24h | 24h | 815.6 | 815.6 | 815.6 |
| 14 | 1.3.2 | Validación de hardware necesario. | 1d | 2023-11-17 A | 2023-11-17 A | 13 | 100% |  | 2023-11-17 | 2023-11-17 | 1d |  |  | ProgramadorJ; AnalistaP; AnalistaD | 24h | 24h | 584.08 | 584.08 | 584.08 |
| 15 | 1.4 | **Diseño Preliminar** | 7d | 2023-11-30 | 2023-12-13 |  |  |  | 2023-11-20 | 2023-11-28 | 7d | -2d | 0d |  | 112h |  | 4,038.72 | 4,038.72 |  |
| 16 | 1.4.1 | Diseño de los datos y procesos. | 6d | 2023-11-30 | 2023-12-12 | 2, 5, 12 |  |  | 2023-11-20 | 2023-11-27 | 6d | -2d | 0d | JefeA; AnalistaD | 96h |  | 3,461.76 | 3,461.76 |  |
| 17 | 1.4.2 | Diseño del plan de pruebas. | 1d | 2023-12-13 | 2023-12-13 | 16 |  |  | 2023-11-28 | 2023-11-28 | 1d | 20d |  | AnalistaD; JefeA | 16h |  | 576.96 | 576.96 |  |
| 18 | 1.5 | **. Diseño Detallado** | 11d | 2023-12-13 | 2024-01-10 |  |  |  | 2023-11-28 | 2023-12-15 | 11d | 10d |  |  | 136h |  | 4,088.64 | 4,088.64 |  |
| 19 | 1.5.1 | Diseño gráfico de la aplicación | 2.5d | 2023-12-13 | 2023-12-15 | 16 |  |  | 2023-11-28 | 2023-11-30 | 2.5d | 18.5d |  | AnalistaW; JefeA | 40h |  | 1,464.24 | 1,464.24 |  |
| 20 | 1.5.2 | **Diseño Técnico de componentes** | 11d | 2023-12-13 | 2024-01-10 |  |  |  | 2023-11-28 | 2023-12-15 | 11d | 10d |  |  | 96h |  | 2,624.4 | 2,624.4 |  |
| 21 | 1.5.2.1 | Presentación | 1d | 2023-12-13 | 2023-12-18 | 16 |  |  | 2023-11-28 | 2023-12-01 | 1d | 17d |  | AnalistaW | 8h |  | 262.48 | 262.48 |  |
| 22 | 1.5.2.2 | Mantenimiento de Explotación Ganadera | 2d | 2023-12-13 | 2023-12-14 | 16 |  |  | 2023-11-28 | 2023-11-29 | 2d | 19d |  | AnalistaP | 16h |  | 429.44 | 429.44 |  |
| 23 | 1.5.2.3 | Mantenimiento de Historial; Reservas,Tarifas y Eventos. | 4d | 2023-12-13 | 2023-12-20 | 16 |  |  | 2023-11-28 | 2023-12-05 | 4d | 15d |  | AnalistaP | 32h |  | 858.88 | 858.88 |  |
| 24 | 1.5.2.4 | Localización | 5d | 2023-12-13 | 2024-01-10 | 16 |  |  | 2023-11-28 | 2023-12-15 | 5d | 10d |  | AnalistaP | 40h |  | 1,073.6 | 1,073.6 |  |

| ID | WBS | Task | Type | Duration | Start | Finish | Predecessors | Baseline start | Baseline finish | Baseline duration | Total slack | Free slack | Constraint | Resources | Work | Cost | Baseline cost |
| --- | --- | --- | --- | --- | --- | --- | --- | --- | --- | --- | --- | --- | --- | --- | --- | --- | --- |
| 25 | 1.6 | **Diseño de la Base de Datos** |  | 5d | 2023-12-13 | 2023-12-19 |  | 2023-11-28 | 2023-12-04 | 5d | -2d | 0d |  |  | 48h | 1,631.04 | 1,631.04 |
| 26 | 1.6.1 | Diseño de Tablas y Relaciones |  | 2.5d | 2023-12-13 | 2023-12-18 | 16 | 2023-11-28 | 2023-12-01 | 2.5d | -2d | 0d |  | AnalistaD; JefeA | 24h | 765.6 | 765.6 |
| 27 | 1.6.2 | Validación del diseño de la BD |  | 2d | 2023-12-15 | 2023-12-19 | 26 | 2023-12-01 | 2023-12-04 | 2d | -2d | 0d | finish no later than 2023-12-19 | JefeA; AnalistaD | 24h | 865.44 | 865.44 |
| 28 | 1.6.3 | Entrega del diseño de la aplicación | milestone | 0d | 2023-12-19 | 2023-12-19 | 27 | 2023-12-04 | 2023-12-04 |  | 16d |  |  |  |  |  |  |
| 29 | 1.7 | **Construcción** |  | 14d | 2023-12-11 | 2024-01-11 |  | 2023-11-24 | 2023-12-18 | 14d | 0d |  |  |  | 312h | 8,661.68 | 8,661.68 |
| 30 | 1.7.1 | Construcción del Prototipo |  | 1d | 2023-12-20 | 2023-12-20 | 16FS+5d | 2023-12-05 | 2023-12-05 | 1d | 15d |  |  | AnalistaD; AnalistaW; JefeA | 24h | 839.44 | 839.44 |
| 31 | 1.7.2 | Construcción de la BD |  | 2d | 2023-12-20 | 2023-12-22 | 27 | 2023-12-05 | 2023-12-12 | 2d | 13d |  |  | AnalistaW; AnalistaD; JefeA | 40h | 1,340.48 | 1,340.48 |
| 32 | 1.7.3 | Codificación |  | 14d | 2023-12-11 | 2024-01-11 | 16FS-2d | 2023-11-24 | 2023-12-18 | 14d | 0d |  |  | ProgramadorJ; AnalistaW; AnalistaD; AnalistaP; JefeA | 248h | 6,481.76 | 6,481.76 |
| 33 | 1.8 | **Pruebas** |  | 2.4d | 2024-01-12 | 2024-01-16 |  | 2023-12-19 | 2023-12-21 | 2.4d | 0d |  |  |  | 96h | 2,666.44 | 2,666.44 |
| 34 | 1.8.1 | Pruebas Unitarias |  | 0.6d | 2024-01-12 | 2024-01-12 | 32 | 2023-12-19 | 2023-12-19 | 0.6d | 0d |  |  | AnalistaD; AnalistaP; AnalistaW; JefeA; ProgramadorJ | 24h | 710.98 | 710.98 |
| 35 | 1.8.2 | Pruebas de Integración |  | 0.4d | 2024-01-12 | 2024-01-12 | 34 | 2023-12-19 | 2023-12-19 | 0.4d | 0d |  |  | AnalistaD; AnalistaP; AnalistaW; JefeA; ProgramadorJ | 16h | 473.98 | 473.98 |
| 36 | 1.8.3 | Pruebas de Sistema |  | 1.4d | 2024-01-15 | 2024-01-16 | 35 | 2023-12-20 | 2023-12-21 | 1.4d | 4d | 0d |  | AnalistaD; AnalistaP; AnalistaW; JefeA; ProgramadorJ | 56h | 1,481.48 | 1,481.48 |
| 37 | 1.9 | **Demostración a los usuarios** |  | 2.6d | 2024-01-16 | 2024-01-18 |  | 2023-12-21 | 2024-01-08 | 2.6d | 4d |  |  |  | 48h | 1,399.68 | 1,399.68 |
| 38 | 1.9.1 | Entrenamiento de usuarios |  | 0.4d | 2024-01-16 | 2024-01-17 | 36 | 2023-12-21 | 2023-12-22 | 0.4d | 4d | 0d |  | AnalistaD; AnalistaP; AnalistaW; JefeA; ProgramadorJ | 32h | 846.56 | 846.56 |
| 39 | 1.9.2 | Validación del producto por los usuarios |  | 1d | 2024-01-17 | 2024-01-18 | 38 | 2023-12-22 | 2024-01-08 | 1d | 4d | 0d |  | JefeA; AnalistaP | 16h | 553.12 | 553.12 |
| 40 | 1.9.3 | Aceptación del producto | milestone | 0d | 2024-01-18 | 2024-01-18 | 39 | 2024-01-08 | 2024-01-08 |  | 4d |  |  |  |  |  |  |
| 41 | 1.10 | **Documentación** |  | 19d | 2023-12-15 | 2024-01-24 |  | 2023-11-30 | 2024-01-12 | 19d | 0d |  |  |  | 120h | 2,305.2 | 2,305.2 |
| 42 | 1.10.1 | Documentación técnica de proyecto |  | 10d | 2023-12-15 | 2024-01-11 | 32FF | 2023-11-30 | 2023-12-18 | 10d | 9d |  |  | Administrativo | 80h | 1,536.8 | 1,536.8 |
| 43 | 1.10.2 | Documentación de usuarios |  | 5d | 2024-01-18 | 2024-01-24 | 35FS+3d | 2024-01-08 | 2024-01-12 | 5d | 0d |  |  | Administrativo | 40h | 768.4 | 768.4 |
